How a schedule from GanttProject changed from version to version. A marks actual dates.

## Version 1 (saved 2018-03-08)

| ID | WBS | Task | Duration | Start | Finish |
| --- | --- | --- | --- | --- | --- |
| 1 | 1 | **Stages** | 379d | 2018-01-03 | 2019-01-16 |
| 2 |  | Preliminary Design | 28d | 2018-01-03 | 2018-01-30 |
| 3 |  | Critical Design | 70d | 2018-02-12 | 2018-04-22 |
| 4 |  | Experiment Building and Testing | 45d | 2018-05-21 | 2018-07-04 |
| 5 |  | Final Experiment Preparations | 45d | 2018-07-30 | 2018-09-12 |
| 6 |  | Launch Campaign | 10d | 2018-10-15 | 2018-10-24 |
| 7 |  | Data Analysis and Reporting | 66d | 2018-11-12 | 2019-01-16 |
| 8 | 2 | **Student Experiment Documentation** | 367d | 2018-01-15 | 2019-01-16 |
| 9 |  | SEDv1-0 | 0d | 2018-01-15 | 2018-01-15 |
| 10 |  | SEDv1-2 | 0d | 2018-03-12 | 2018-03-12 |
| 11 |  | SEDv2-0 | 0d | 2018-05-14 | 2018-05-14 |
| 12 |  | SEDv3-0 | 0d | 2018-07-16 | 2018-07-16 |
| 13 |  | SEDv4-0 | 0d | 2018-09-17 | 2018-09-17 |
| 14 |  | SEDv5-0 | 66d | 2018-11-12 | 2019-01-16 |
| 15 | 3 | **Reviews** | 243d | 2018-02-05 | 2018-10-05 |
| 16 |  | Preliminary Design Review (PDR) | 5d | 2018-02-05 | 2018-02-09 |
| 17 |  | Critical Design Review (CDR) | 5d | 2018-05-21 | 2018-05-25 |
| 18 |  | Integration Progress Review (IPR) | 5d | 2018-07-23 | 2018-07-27 |
| 19 |  | Experiment Acceptance Review (EAR) | 5d | 2018-10-01 | 2018-10-05 |
| 20 | 4 | **Exam Periods** | 376d | 2018-01-08 | 2019-01-18 |
| 21 |  | Exam Period 1 (EX1) | 5d | 2018-01-08 | 2018-01-12 |
| 22 |  | Exam Period 2 (EX2) | 10d | 2018-03-12 | 2018-03-21 |
| 23 |  | Exam Period 3 (EX3) | 8d | 2018-05-23 | 2018-05-30 |
| 24 |  | Exam Period 4 (EX4) | 10d | 2018-08-13 | 2018-08-22 |
| 25 |  | Exam Period 5 (EX5) | 10d | 2018-10-15 | 2018-10-24 |
| 26 |  | Exam Period 6 (EX6) | 5d | 2018-12-17 | 2018-12-21 |
| 27 |  | Exam Period 7 (EX7) | 5d | 2019-01-14 | 2019-01-18 |
| 28 | 5 | **Electrical Division** | 142d | 2018-01-25 | 2018-06-15 |
| 29 |  | Select pump | 2d | 2018-02-22 | 2018-02-23 |
| 30 |  | Find pump on Swedish vendor site | 0d | 2018-02-26 | 2018-02-26 |
| 31 |  | Order pump | 30d | 2018-02-26 | 2018-03-27 |
| 32 |  | Select valves, switching cuircit, ad interfaces | 5d | 2018-02-22 | 2018-02-26 |
| 33 |  | Find valves on Swedish vendor site | 0d | 2018-03-01 | 2018-03-01 |
| 34 |  | Order valves | 31d | 2018-03-02 | 2018-04-01 |
| 35 |  | Find all electrical sensors | 3d | 2018-03-05 | 2018-03-07 |
| 36 |  | Order sensors | 30d | 2018-02-08 | 2018-03-09 |
| 37 |  | Update initial/preliminary circtuit diagram | 2d | 2018-01-25 | 2018-01-26 |
| 38 |  | Define sensors | 2d | 2018-01-25 | 2018-01-26 |
| 39 |  | Create circuit diagram | 5d | 2018-02-27 | 2018-03-03 |
| 40 |  | Identify extra components | 2d | 2018-03-05 | 2018-03-06 |
| 41 |  | Define interfaces between EB, valve center, and CAC | 5d | 2018-02-28 | 2018-03-04 |
| 42 |  | Find extra components | 2d | 2018-03-07 | 2018-03-08 |
| 43 |  | Order extra components | 20d | 2018-03-20 | 2018-04-08 |
| 44 |  | Decide on number of PCBs | 9d | 2018-03-20 | 2018-03-28 |
| 45 |  | Design PCB | 10d | 2018-03-20 | 2018-03-29 |
| 46 |  | Power distribution circuit diagram | 5d | 2018-03-22 | 2018-03-26 |
| 47 |  | Figure out grounding | 10d | 2018-03-20 | 2018-03-29 |
| 48 |  | Confirm heating requirements, heater placement, number, size | 6d | 2018-03-12 | 2018-03-17 |
| 49 |  | Print PCB | 10d | 2018-05-15 | 2018-05-24 |
| 50 |  | Soldering PCB | 1d | 2018-06-01 | 2018-06-01 |
| 51 | 5.23 | **Testing** | 94d | 2018-03-12 | 2018-06-13 |
| 52 |  | Plan component testing | 2d | 2018-03-12 | 2018-03-13 |
| 53 |  | Test: pump, sample size, flow rate, time of sampling | 2d | 2018-04-13 | 2018-04-14 |
| 54 |  | Test: breadboard with Arduino, pump, and valves. | 2d | 2018-04-13 | 2018-04-14 |
| 55 |  | Test: breadboard with arduino and sensors | 2d | 2018-04-13 | 2018-04-14 |
| 56 |  | Test: check valves and connections | 2d | 2018-04-13 | 2018-04-14 |
| 57 |  | Test: check pump and connections | 5d | 2018-04-16 | 2018-04-20 |
| 58 |  | Test: check pump low pressure test with valves and bags | 5d | 2018-04-16 | 2018-04-20 |
| 59 |  | Test: thermal with emphasis on pumps and valves | 5d | 2018-04-16 | 2018-04-20 |
| 60 |  | Test: PCB, AAC, and CAC integration. Valve center. | 10d | 2018-06-04 | 2018-06-13 |
| 61 |  | Integration with Software | 15d | 2018-06-01 | 2018-06-15 |
| 62 | 6 | **Software Division** | 114d | 2018-02-22 | 2018-06-15 |
| 63 |  | Acquire Arduino Due and ethernet shield | 15d | 2018-02-22 | 2018-03-08 |
| 64 |  | Design & record telecomand & telemetry package | 1d | 2018-02-27 | 2018-02-27 |
| 65 |  | Sequence diagram for telecommand | 0d | 2018-03-12 | 2018-03-12 |
| 66 |  | Sequence diagram for telemetry | 0d | 2018-03-12 | 2018-03-12 |
| 67 |  | Listing header file for sensors etc | 0d | 2018-02-26 | 2018-02-26 |
| 68 |  | Code sensors reading object | 2d | 2018-02-27 | 2018-02-28 |
| 69 |  | Code air sampling object | 5d | 2018-03-26 | 2018-03-30 |
| 70 |  | Code heating object | 13d | 2018-03-19 | 2018-03-31 |

| ID | WBS | Task | Duration | Start | Finish |
| --- | --- | --- | --- | --- | --- |
| 71 |  | Apply watchdog and test it | 0d | 2018-04-01 | 2018-04-01 |
| 72 |  | Code rx/TX object | 14d | 2018-03-26 | 2018-04-08 |
| 73 |  | Make interface document (Pins) | 0d | 2018-04-29 | 2018-04-29 |
| 74 |  | Write ground section and code | 23d | 2018-04-01 | 2018-04-23 |
| 75 |  | Write GS manual | 8d | 2018-04-23 | 2018-04-30 |
| 76 | 6.14 | **Testing** | 35d | 2018-04-30 | 2018-06-03 |
| 77 |  | Test: GS-OBC connection | 7d | 2018-04-30 | 2018-05-06 |
| 78 |  | Test: GS can reprogram the software | 7d | 2018-05-07 | 2018-05-13 |
| 79 |  | Test: Running software for 10 hours (no overflows) | 7d | 2018-05-14 | 2018-05-20 |
| 80 |  | Test: Invalid commands for GS-OBC | 8d | 2018-05-20 | 2018-05-27 |
| 81 |  | Test: Integration testing | 7d | 2018-05-28 | 2018-06-03 |
| 82 |  | Integration with Electrical | 15d | 2018-06-01 | 2018-06-15 |
| 83 | 7 | **Mechanical Division** | 202d | 2018-02-26 | 2018-09-15 |
| 84 |  | Design the new configuration | 11d | 2018-02-26 | 2018-03-08 |
| 85 |  | Decide on locations of external connections | 11d | 2018-02-26 | 2018-03-08 |
| 86 |  | Agree on new designs with programme organizers | 11d | 2018-02-26 | 2018-03-08 |
| 87 |  | Design pipes | 5d | 2018-02-26 | 2018-03-02 |
| 88 |  | Find valves | 5d | 2018-02-26 | 2018-03-02 |
| 89 |  | Order valves | 15d | 2018-03-05 | 2018-03-19 |
| 90 |  | Label all figures in SED | 0d | 2018-02-26 | 2018-02-26 |
| 91 |  | Acquire styrofoam walls (payload protection) | 11d | 2018-05-11 | 2018-05-21 |
| 92 |  | Acquire aluminium sheet for the walls | 11d | 2018-05-11 | 2018-05-21 |
| 93 |  | Acquire polyethylene foam (thermal insulation) | 11d | 2018-05-11 | 2018-05-21 |
| 94 |  | Acquire experiment building components (e.g. screws) | 11d | 2018-05-11 | 2018-05-21 |
| 95 |  | Acquire frame bars REXROTH | 11d | 2018-05-11 | 2018-05-21 |
| 96 |  | Join the frame bars build structure | 21d | 2018-06-01 | 2018-06-21 |
| 97 |  | Build valve center (drill holes, attach valve, fix in the structure) | 21d | 2018-06-01 | 2018-06-21 |
| 98 |  | Attach the pipes | 5d | 2018-06-25 | 2018-06-29 |
| 99 |  | Build the walls (aluminium sheet, PE FOAM insulation sterofoam) | 5d | 2018-07-25 | 2018-07-29 |
| 100 |  | Make holes in the walls for the external connections | 5d | 2018-07-25 | 2018-07-29 |
| 101 |  | Attach the walls to the structure | 5d | 2018-07-25 | 2018-07-29 |
| 102 | 7.19 | **Testing** | 46d | 2018-08-01 | 2018-09-15 |
| 103 |  | Test: vibration | 46d | 2018-08-01 | 2018-09-15 |
| 104 |  | Test: shock | 46d | 2018-08-01 | 2018-09-15 |
| 105 |  | Test: thermal | 46d | 2018-08-01 | 2018-09-15 |
| 106 |  | Test: styrofoam in vacuum | 46d | 2018-08-01 | 2018-09-15 |
| 107 |  | Test: mechanical interfaces | 46d | 2018-08-01 | 2018-09-15 |
| 108 | 8 | **Science Division** | 68d | 2018-02-22 | 2018-04-30 |
| 109 |  | Bags vs Canisters decision | 0d | 2018-02-23 | 2018-02-23 |
| 110 |  | Understand maths of sampling/test. Flow rate requirements | 3d | 2018-02-22 | 2018-02-24 |
| 111 |  | Similarity with LISA (the paper Lightweight Stratospheric Air Sample) | 0d | 2018-02-22 | 2018-02-22 |
| 112 |  | Calculate endothermal analysis (i.e. atmosphere and sun) | 0d | 2018-02-22 | 2018-02-22 |
| 113 |  | Obtain empirical model | 11d | 2018-03-02 | 2018-03-12 |
| 114 |  | Determing sampling altitudes | 0d | 2018-05-01 | 2018-05-01 |
| 115 |  | Thermal Diviion | 1d | 2018-02-01 | 2018-02-01 |

## Version 2 (saved 2018-03-08)

Note of the change: More updates for SED v1.2

Last finish stays 2019-01-18.

Added:

| ID | Task | Duration | Start | Finish |
| --- | --- | --- | --- | --- |
| 62 | Test: Integration with electrical | 16d | 2018-06-15 | 2018-06-30 |
| 84 | Test: Integration with software | 16d | 2018-06-15 | 2018-06-30 |
| 117 | Find out how Piacaro analyser works | 4d | 2018-08-30 | 2018-09-02 |
| 118 | Post-flight analysis | 28d | 2018-10-22 | 2018-11-18 |
| 119 | Write research paper | 58d | 2018-11-19 | 2019-01-15 |
| 120 | Publish research paper | 16d | 2018-01-16 | 2018-01-31 |
| 122 | Update thermal design | 4d | 2018-03-01 | 2018-03-04 |

Changed:

| ID | Task | Start | Finish | Duration | Other |
| --- | --- | --- | --- | --- | --- |
| 28 | **Electrical Division** |  | 2018-06-15 → 2018-06-30 (+15d) | 142d → 157d |  |
| 52 | **Testing** |  | 2018-06-13 → 2018-06-30 (+17d) | 94d → 111d |  |
| 54 | Test: Pump, sample size, flow rate, time of sampling |  |  |  | was named Test: pump, sample size, flow rate, time of sampling |
| 55 | Test: Breadboard with Arduino, pump, and valves. |  |  |  | was named Test: breadboard with Arduino, pump, and valves. |
| 56 | Test: Breadboard with arduino and sensors |  |  |  | was named Test: breadboard with arduino and sensors |
| 57 | Test: Check valves and connections |  |  |  | was named Test: check valves and connections |
| 58 | Test: Check pump and connections |  |  |  | was named Test: check pump and connections |
| 59 | Test: Check pump low pressure test with valves and bags |  |  |  | was named Test: check pump low pressure test with valves and bags |
| 60 | Test: Thermal with emphasis on pumps and valves |  |  |  | was named Test: thermal with emphasis on pumps and valves |
| 63 | **Software Division** |  | 2018-06-15 → 2018-06-30 (+15d) | 114d → 129d |  |
| 78 | **Testing** |  | 2018-06-03 → 2018-06-30 (+27d) | 35d → 62d |  |
| 83 | Test: Software integration testing |  |  |  | was named Test: Integration testing |
| 110 | **Science Division** | 2018-02-22 → 2018-01-16 (-37d) | 2018-04-30 → 2019-01-15 (+260d) | 68d → 365d |  |
| 121 | **Thermal Diviion** | 2018-02-01 → 2018-03-01 (+28d) | 2018-02-01 → 2018-03-04 (+31d) | 1d → 4d |  |

## Version 3 (saved 2018-03-12)

Note of the change: Updated ganttchart for SED v1.2

Last finish stays 2019-01-18.

Added:

| ID | Task | Duration | Start | Finish |
| --- | --- | --- | --- | --- |
| 5 | Integration Progress Reviews | 5d | 2018-07-24 | 2018-07-28 |
| 115 | Calculate exothermal analysis | 3d | 2018-02-24 | 2018-02-26 |
| 125 | **Integration Testing** | 42d | 2018-09-01 | 2018-10-12 |
| 126 | Integration Testing | 40d | 2018-09-01 | 2018-10-10 |
| 127 | Pre-flight testing | 5d | 2018-10-08 | 2018-10-12 |

Changed:

| ID | Task | Start | Duration |
| --- | --- | --- | --- |
| 114 | **Thermal Diviion** | 2018-03-01 → 2018-02-24 (-5d) | 4d → 9d |

## Version 4 (saved 2018-03-12)

Note of the change: generated html

Last finish stays 2019-01-18.

Added:

| ID | Task | Duration | Start | Finish |
| --- | --- | --- | --- | --- |
| 109 | MATLAB simulation of flight | 7d | 2018-03-12 | 2018-03-18 |
| 110 | Model/simulation of sampling | 22d | 2018-03-25 | 2018-04-15 |
| 112 | Understand how chromatographer works | 7d | 2018-05-14 | 2018-05-20 |
| 113 | FMI site visit / AirCore tube retrieval | 7d | 2018-07-01 | 2018-07-07 |
| 118 | **Testing** | 37d | 2018-04-09 | 2018-05-15 |
| 119 | Test: planning / sampling methodology | 7d | 2018-04-09 | 2018-04-15 |
| 120 | Test: sampling | 7d | 2018-04-16 | 2018-04-22 |
| 121 | Analyse sampling test results | 16d | 2018-04-30 | 2018-05-15 |
| 122 | Test: bag condensation test | 7d | 2018-04-23 | 2018-04-29 |
| 126 | Onboard new thermal team member | 11d | 2018-03-15 | 2018-03-25 |
| 127 | Planned long term thermal tasks | 0d | 2018-03-30 | 2018-03-30 |

Changed:

| ID | Task | Finish | Duration |
| --- | --- | --- | --- |
| 123 | **Thermal Diviion** | 2018-03-04 → 2018-03-29 (+25d) | 9d → 34d |

## Version 5 (saved 2018-04-06)

Last finish stays 2019-01-18.

Added:

| ID | Task | Duration | Start | Finish |
| --- | --- | --- | --- | --- |
| 128 | Finish calculate Solar Flux and Albedo Flux | 6d | 2018-04-06 | 2018-04-11 |
| 129 | Calculate the Earth IR Flux | 6d | 2018-04-06 | 2018-04-11 |
| 130 | Calculate Dissipated heat and Convection | 8d | 2018-04-12 | 2018-04-19 |
| 131 | Preparations for simulations | 8d | 2018-04-12 | 2018-04-19 |
| 132 | Simulate the heat and analyse simulations | 11d | 2018-04-20 | 2018-04-30 |
| 133 | Document results from calculations and simulations and define tests | 11d | 2018-04-20 | 2018-04-30 |
| 134 | Extra time for simulations and calculations if changes occure from electronics or mechanical | 5d | 2018-05-01 | 2018-05-05 |
| 135 | Document thermal analysis for CDR | 13d | 2018-05-01 | 2018-05-13 |
| 136 | Check and perfect documentation for CDR | 3d | 2018-05-11 | 2018-05-13 |
| 137 | Fix suggestions from CDR, redo simulations and calculations if needed. | 30d | 2018-06-01 | 2018-06-30 |
| 138 | Help in building | 62d | 2018-07-01 | 2018-08-31 |
| 139 | **Testing** | 31d | 2018-08-01 | 2018-08-31 |
| 140 | Thermal test: floating phase | 31d | 2018-08-01 | 2018-08-31 |
| 141 | Thermal test: temperature decrease while waiting for recovery | 31d | 2018-08-01 | 2018-08-31 |
| 142 | Thermal test: test insulation for all boxes and validate with simulations | 31d | 2018-08-01 | 2018-08-31 |

Changed:

| ID | Task | Finish | Duration |
| --- | --- | --- | --- |
| 123 | **Thermal Diviion** | 2018-03-29 → 2018-08-31 (+155d) | 34d → 189d |

## Version 6 (saved 2018-04-20)

Note of the change: update software freeze date and add 1 test

Last finish stays 2019-01-18.

Added:

| ID | Task | Duration | Start | Finish |
| --- | --- | --- | --- | --- |
| 73 | Test: Verify data return correctly | 1d | 2018-06-08 | 2018-06-08 |
| 79 | Software freeze date | 1d | 2018-09-15 | 2018-09-15 |

Changed:

| ID | Task | Finish | Duration |
| --- | --- | --- | --- |
| 56 | **Software Division** | 2018-06-30 → 2018-09-15 (+77d) | 129d → 206d |

## Version 7 (saved 2018-05-10)

Note of the change: turned development freeze into a milestone.

Last finish stays 2019-01-18.

Changed:

| ID | Task | Finish | Duration |
| --- | --- | --- | --- |
| 56 | **Software Division** | 2018-09-15 → 2018-09-14 (-1d) | 206d → 205d |
| 71 | Software freeze date |  | 1d → 0d |

## Version 8 (saved 2018-05-10)

Note of the change: fixed date range of stages.

Last finish stays 2019-01-18.

Changed:

| ID | Task | Start | Finish | Duration |
| --- | --- | --- | --- | --- |
| 1 | **Stages** | 2018-01-03 → 2018-01-08 (+5d) | 2019-01-16 → 2018-12-30 (-17d) | 379d → 357d |
| 2 | Preliminary Design | 2018-01-03 → 2018-01-08 (+5d) | 2018-01-30 → 2018-02-11 (+12d) | 28d → 35d |
| 3 | Critical Design |  | 2018-04-22 → 2018-06-03 (+42d) | 70d → 112d |
| 4 | Experiment Building and Testing | 2018-05-21 → 2018-06-06 (+16d) | 2018-07-04 → 2018-09-18 (+76d) | 45d → 105d |
| 6 | Final Experiment Preparations | 2018-07-30 → 2018-09-17 (+49d) | 2018-09-12 → 2018-10-11 (+29d) | 45d → 25d |
| 7 | Launch Campaign | 2018-10-15 → 2018-10-12 (-3d) | 2018-10-24 → 2018-10-22 (-2d) | 10d → 11d |
| 8 | Data Analysis and Reporting | 2018-11-12 → 2018-10-23 (-20d) | 2019-01-16 → 2018-12-30 (-17d) | 66d → 69d |

## Version 9 (saved 2018-05-10)

Note of the change: fixed some dates. Still needs to be reviewed against Test Plan in CDR.

Last finish stays 2019-01-18.

Changed:

| ID | Task | Start | Finish | Duration |
| --- | --- | --- | --- | --- |
| 5 | Integration Progress Reviews | 2018-07-24 → 2018-07-23 (-1d) | 2018-07-28 → 2018-07-24 (-4d) | 5d → 2d |
| 18 | Critical Design Review (CDR) | 2018-05-21 → 2018-05-28 (+7d) | 2018-05-25 → 2018-06-01 (+7d) |  |
| 19 | Integration Progress Review (IPR) |  | 2018-07-27 → 2018-07-24 (-3d) | 5d → 2d |

## Version 10 (saved 2018-05-14)

Note of the change: Merge 6b8d06c0998ef4198e6287c737e436b7d119bdc6 into 1c4140037c7f405289fc6cb03039f7a13e3c5ce5

Last finish stays 2019-01-18.

Added:

| ID | Task | Duration | Start | Finish |
| --- | --- | --- | --- | --- |
| 120 | Pump operation test | 1d | 2018-04-24 | 2018-04-24 |
| 121 | Pump low pressure test | 2d | 2018-05-01 | 2018-05-02 |
| 122 | Sampling bag bursting test | 4d | 2018-05-01 | 2018-05-04 |
| 123 | Software and electronics integration testing | 138d | 2018-05-01 | 2018-09-15 |
| 124 | GS-OBC Parameters Reprogram Test | 153d | 2018-05-01 | 2018-09-30 |
| 125 | On-board software unit test | 153d | 2018-05-01 | 2018-09-30 |
| 126 | Pump current in low pressure test | 1d | 2018-05-04 | 2018-05-04 |
| 127 | Data collection test | 30d | 2018-06-01 | 2018-06-30 |
| 128 | Mechanical structural testing | 61d | 2018-06-01 | 2018-07-31 |
| 129 | PCB operations test | 61d | 2018-06-01 | 2018-07-31 |
| 130 | Switching circuit testing and verification | 61d | 2018-06-01 | 2018-07-31 |
| 131 | Low pressure | 31d | 2018-07-01 | 2018-07-31 |
| 132 | Sampling test | 31d | 2018-07-01 | 2018-07-31 |
| 133 | Shock test | 31d | 2018-08-01 | 2018-08-31 |
| 134 | Software operation test | 31d | 2018-08-01 | 2018-08-31 |
| 135 | Thermal test | 61d | 2018-08-01 | 2018-09-30 |
| 136 | Weight verification | 30d | 2018-09-01 | 2018-09-30 |
| 137 | Bench test | 30d | 2018-09-01 | 2018-09-30 |
| 138 | Vibration test | 30d | 2018-09-01 | 2018-09-30 |
| 139 | Experiment removal test | 30d | 2018-09-01 | 2018-09-30 |
| 140 | Samples’ condensation test | 5d | 2018-09-03 | 2018-09-07 |
| 141 | E-Link test | 31d | 2018-10-01 | 2018-10-31 |

Removed: 46 Plan component testing; 47 Test: Pump, sample size, flow rate, time of sampling; 48 Test: Breadboard with Arduino, pump, and valves.; 49 Test: Breadboard with arduino and sensors; 50 Test: Check valves and connections; 51 Test: Check pump and connections; 52 Test: Check pump low pressure test with valves and bags; 53 Test: Thermal with emphasis on pumps and valves; 54 Test: PCB, AAC, and CAC integration. Valve center.; 55 Test: Integration with electrical; 72 Testing; 73 Test: GS-OBC connection; 74 Test: Verify data return correctly; 75 Test: GS can reprogram the software; 76 Test: Running software for 10 hours (no overflows); 77 Test: Invalid commands for GS-OBC; 78 Test: Software integration testing; 79 Test: Integration with software; 99 Testing; 100 Test: vibration; 101 Test: shock; 102 Test: thermal; 103 Test: styrofoam in vacuum; 104 Test: mechanical interfaces; 120 Testing; 121 Test: planning / sampling methodology; 122 Test: sampling; 123 Analyse sampling test results; 124 Test: bag condensation test; 141 Testing; 142 Thermal test: floating phase; 143 Thermal test: temperature decrease while waiting for recovery; 144 Thermal test: test insulation for all boxes and validate with simulations; 153 Integration Testing; 154 Integration Testing; 155 Pre-flight testing

Changed:

| ID | Task | Start | Finish | Duration |
| --- | --- | --- | --- | --- |
| 21 | **Electrical Division** |  | 2018-06-30 → 2018-06-15 (-15d) | 157d → 142d |
| 61 | **Mechanical Division** |  | 2018-09-15 → 2018-07-29 (-48d) | 202d → 154d |
| 119 | **Testing** | 2018-03-12 → 2018-04-24 (+43d) | 2018-06-30 → 2018-10-31 (+123d) | 111d → 191d |
